# Advanced Tracking B_Start

How a schedule from MS Project changed from version to version. A marks actual dates.

## Version 1 (saved 2025-09-25, file Advanced Tracking B_Start.mpp)

Note of the change: QLDA Buổi 4

| ID | WBS | Task | Duration | Start | Finish | Predecessors | Complete | Total float | Constraint |
| --- | --- | --- | --- | --- | --- | --- | --- | --- | --- |
| 1 | 1 | **Họp nhân viên biên tập** | 60.12d | 2015-04-13 08:00 A | 2015-07-06 09:00 |  | 15% | 103.75d |  |
| 2 |  | Editorial staff meeting 1 | 1h | 2015-04-13 08:00 A | 2015-04-13 09:00 A |  | 100% |  | start no earlier than 2015-04-13 08:00 |
| 3 |  | Editorial staff meeting 2 | 1h | 2015-04-20 08:00 A | 2015-04-20 09:00 A |  | 100% |  | start no earlier than 2015-04-20 08:00 |
| 4 |  | Editorial staff meeting 3 | 1h | 2015-04-27 08:00 | 2015-04-27 09:00 |  |  | 153.75d | start no earlier than 2015-04-27 08:00 |
| 5 |  | Editorial staff meeting 4 | 1h | 2015-05-04 08:00 | 2015-05-04 09:00 |  |  | 148.75d | start no earlier than 2015-05-04 08:00 |
| 6 |  | Editorial staff meeting 5 | 1h | 2015-05-11 08:00 | 2015-05-11 09:00 |  |  | 143.75d | start no earlier than 2015-05-11 08:00 |
| 7 |  | Editorial staff meeting 6 | 1h | 2015-05-18 08:00 | 2015-05-18 09:00 |  |  | 138.75d | start no earlier than 2015-05-18 08:00 |
| 8 |  | Editorial staff meeting 7 | 1h | 2015-05-25 08:00 | 2015-05-25 09:00 |  |  | 133.75d | start no earlier than 2015-05-25 08:00 |
| 9 |  | Editorial staff meeting 8 | 1h | 2015-06-01 08:00 | 2015-06-01 09:00 |  |  | 128.75d | start no earlier than 2015-06-01 08:00 |
| 10 |  | Editorial staff meeting 9 | 1h | 2015-06-08 08:00 | 2015-06-08 09:00 |  |  | 123.75d | start no earlier than 2015-06-08 08:00 |
| 11 |  | Editorial staff meeting 10 | 1h | 2015-06-15 08:00 | 2015-06-15 09:00 |  |  | 118.75d | start no earlier than 2015-06-15 08:00 |
| 12 |  | Editorial staff meeting 11 | 1h | 2015-06-22 08:00 | 2015-06-22 09:00 |  |  | 113.75d | start no earlier than 2015-06-22 08:00 |
| 13 |  | Editorial staff meeting 12 | 1h | 2015-06-29 08:00 | 2015-06-29 09:00 |  |  | 108.75d | start no earlier than 2015-06-29 08:00 |
| 14 |  | Editorial staff meeting 13 | 1h | 2015-07-06 08:00 | 2015-07-06 09:00 |  |  | 103.75d | start no earlier than 2015-07-06 08:00 |
| 15 | 2 | **Sự tiếp nhận** | 35.5d | 2015-04-06 08:00 A | 2015-05-25 12:00 |  | 58% | 0d |  |
| 16 |  | Nhận bản thảo | 0d | 2015-04-06 08:00 A | 2015-04-06 08:00 A |  | 100% |  |  |
| 17 |  | Biên tập nội dung | 15d | 2015-04-06 08:00 A | 2015-04-30 10:00 A | 16 | 100% |  |  |
| 18 |  | Đánh giá tác phẩm gốc | 10.25d | 2015-04-23 10:00 A | 2015-05-07 12:00 | 17FS-5d | 66% | 0d |  |
| 19 |  | Đánh giá của tác giả về nội dung biên tập | 12d | 2015-05-07 13:00 | 2015-05-25 12:00 | 17, 18 |  | 0d |  |
| 20 |  | Bàn giao cho bộ phận biên tập | 0d | 2015-05-25 12:00 | 2015-05-25 12:00 | 19 |  | 0d |  |
| 21 | 3 | **Bộ phận biên tập** | 29.12d | 2015-05-25 13:00 | 2015-07-03 14:00 | 15 |  | 0d |  |
| 22 |  | Sắp xếp bản sao cho bản thảo | 5.12d | 2015-05-25 13:00 | 2015-06-01 14:00 |  |  | 0d |  |
| 23 |  | Hiệu đính bản thảo | 11.25d | 2015-06-01 14:00 | 2015-06-16 16:00 | 22 |  | 0d |  |
| 24 |  | Tác giả duyệt bản hiệu đính | 10d | 2015-06-16 16:00 | 2015-06-30 16:00 | 23 |  | 0d |  |
| 25 |  | Tích hợp chỉnh sửa hiệu đính | 5.12d | 2015-06-26 11:00 | 2015-07-03 14:00 | 24FS-2.5% |  | 0d |  |
| 26 |  | Bàn giao cho sản xuất | 0d | 2015-07-03 14:00 | 2015-07-03 14:00 | 25 |  | 0d |  |
| 27 | 4 | **Thiết kế và sản xuất** | 58.25d | 2015-07-03 14:00 | 2015-09-23 16:00 | 21 |  | 0d |  |
| 28 |  | Dàn trang | 15d | 2015-07-03 14:00 | 2015-07-24 14:00 |  |  | 0d |  |
| 29 |  | Thiết kế minh họa nội dung | 15.25d | 2015-07-03 14:00 | 2015-07-24 16:00 | 28SS |  | 0d |  |
| 30 | 4.3 | **Duyệt trang lần 1** | 30d | 2015-07-24 16:00 | 2015-09-04 16:00 | 29 |  | 0d |  |
| 31 |  | Soát lỗi và lập chỉ mục | 10d | 2015-07-24 16:00 | 2015-08-07 16:00 |  |  | 0d | start no earlier than 2015-07-17 08:00 |
| 32 |  | Tích hợp phản hồi duyệt lần 1 | 10d | 2015-08-07 16:00 | 2015-08-21 16:00 | 31 |  | 0d |  |
| 33 |  | Gửi trang đã soát lỗi cho sản xuất | 0d | 2015-08-21 16:00 | 2015-08-21 16:00 | 32 |  | 0d |  |
| 34 |  | Nhập chỉnh sửa trang và chỉ mục | 5d | 2015-08-21 16:00 | 2015-08-28 16:00 | 33 |  | 0d |  |
| 35 |  | Thiết kế bìa | 5d | 2015-08-28 16:00 | 2015-09-04 16:00 | 34 |  | 0d |  |
| 36 | 4.4 | **Duyệt trang lần 2** | 13d | 2015-09-04 16:00 | 2015-09-23 16:00 |  |  | 0d |  |
| 37 |  | Soát thử và duyệt | 6.5d | 2015-09-04 16:00 | 2015-09-15 11:00 | 35 |  | 0d |  |
| 38 |  | Gửi trang đã soát lỗi cho sản xuất | 0d | 2015-09-15 11:00 | 2015-09-15 11:00 | 37 |  | 0d |  |
| 39 |  | Duyệt cuối | 5d | 2015-09-16 16:00 | 2015-09-23 16:00 | 38 |  | 0d |  |
| 40 | 4.5 | **Thiết kế website đi kèm cho sách** | 10d | 2015-09-04 16:00 | 2015-09-18 16:00 | 30 |  | 3d |  |
| 41 |  | Tạo bản mẫu | 4.5d | 2015-09-04 16:00 | 2015-09-16 16:00 |  |  | 3d |  |
| 42 |  | Duyệt cùng tác giả | 2d | 2015-09-16 16:00 | 2015-09-18 16:00 | 41 |  | 3d |  |
| 43 | 5 | **Chuẩn bị màu và in ấn** | 46d | 2015-09-23 16:00 | 2015-11-26 16:00 | 40 |  | 0d |  |
| 44 |  | Gửi đến nhà tách màu | 1d | 2015-09-23 16:00 | 2015-09-28 16:00 | 36 |  | 0d |  |
| 45 |  | Tạo bản in thử | 10d | 2015-09-28 16:00 | 2015-10-12 16:00 | 44 |  | 0d |  |
| 46 |  | In và giao hàng | 30d | 2015-10-15 16:00 | 2015-11-26 16:00 | 45FS+3d |  | 0d |  |
| 47 | 6 | **Chuẩn bị ra mắt sách** | 22d | 2015-09-28 16:00 | 2015-10-28 16:00 |  |  | 21d |  |
| 48 |  | Lập kế hoạch ra mắt | 5d | 2015-09-28 16:00 | 2015-10-05 16:00 | 44 |  | 21d |  |
| 49 |  | Phân công thành viên đội ra mắt | 1d | 2015-10-05 16:00 | 2015-10-06 16:00 | 48 |  | 21d |  |
| 50 |  | Hoàn thành bảng câu hỏi của tác giả | 5d | 2015-10-06 16:00 | 2015-10-13 16:00 | 49 |  | 21d |  |
| 51 |  | Lên lịch phỏng vấn tác giả | 1d | 2015-10-13 16:00 | 2015-10-14 16:00 | 50 |  | 21d |  |
| 52 |  | Thiết kế và đặt ấn phẩm marketing | 10d | 2015-10-14 16:00 | 2015-10-28 16:00 | 51 |  | 21d |  |

## Version 2 (saved 2025-09-25, file Advanced Tracking C_Start.mpp)

Note of the change: QLDA Buổi 4

Last finish stays 2015-11-26. Complete tasks 4 → 14.

Changed:

| ID | Task | Start | Finish | Duration | Complete | Total float | Other |
| --- | --- | --- | --- | --- | --- | --- | --- |
| 1 | **Editorial Staff Meeting** |  |  |  | 15% → 54% | 103.75d → 103.88d | was named Họp nhân viên biên tập |
| 2 | Editorial staff meeting 1 |  |  |  |  |  | resources Trần Thanh Điện; Jun Cao; Huỳnh Phương; Phan Minh Thương [50%] → Carole Poland; Jun Cao; Huỳnh Phương Nam; Phan Minh Thuận [50%] |
| 3 | Editorial staff meeting 2 |  |  |  |  |  | resources Trần Thanh Điện; Jun Cao; Huỳnh Phương; Phan Minh Thương [50%] → Carole Poland; Jun Cao; Huỳnh Phương Nam; Phan Minh Thuận [50%] |
| 4 | Editorial staff meeting 3 | 2015-04-27 08:00 A | 2015-04-27 09:00 A |  | 0% → 100% | 153.75d → none | resources Trần Thanh Điện; Jun Cao; Huỳnh Phương; Phan Minh Thương [50%] → Carole Poland; Jun Cao; Huỳnh Phương Nam; Phan Minh Thuận [50%] |
| 5 | Editorial staff meeting 4 | 2015-05-04 08:00 A | 2015-05-04 09:00 A |  | 0% → 100% | 148.75d → none | resources Trần Thanh Điện; Jun Cao; Huỳnh Phương; Phan Minh Thương [50%] → Carole Poland; Jun Cao; Huỳnh Phương Nam; Phan Minh Thuận [50%] |
| 6 | Editorial staff meeting 5 | 2015-05-11 08:00 A | 2015-05-11 09:00 A |  | 0% → 100% | 143.75d → none | resources Trần Thanh Điện; Jun Cao; Huỳnh Phương; Phan Minh Thương [50%] → Carole Poland; Jun Cao; Huỳnh Phương Nam; Phan Minh Thuận [50%] |
| 7 | Editorial staff meeting 6 | 2015-05-18 08:00 A | 2015-05-18 09:00 A |  | 0% → 100% | 138.75d → none | resources Trần Thanh Điện; Jun Cao; Huỳnh Phương; Phan Minh Thương [50%] → Carole Poland; Jun Cao; Huỳnh Phương Nam; Phan Minh Thuận [50%] |
| 8 | Editorial staff meeting 7 | 2015-05-25 08:00 A | 2015-05-25 09:00 A |  | 0% → 100% | 133.75d → none | resources Trần Thanh Điện; Jun Cao; Huỳnh Phương; Phan Minh Thương [50%] → Carole Poland; Jun Cao; Huỳnh Phương Nam; Phan Minh Thuận [50%] |
| 9 | Editorial staff meeting 8 |  |  |  |  | 128.75d → 128.88d | resources Trần Thanh Điện; Jun Cao; Huỳnh Phương; Phan Minh Thương [50%] → Carole Poland; Jun Cao; Huỳnh Phương Nam; Phan Minh Thuận [50%] |
| 10 | Editorial staff meeting 9 |  |  |  |  | 123.75d → 123.88d | resources Trần Thanh Điện; Jun Cao; Huỳnh Phương; Phan Minh Thương [50%] → Carole Poland; Jun Cao; Huỳnh Phương Nam; Phan Minh Thuận [50%] |
| 11 | Editorial staff meeting 10 |  |  |  |  | 118.75d → 118.88d | resources Trần Thanh Điện; Jun Cao; Huỳnh Phương; Phan Minh Thương [50%] → Carole Poland; Jun Cao; Huỳnh Phương Nam; Phan Minh Thuận [50%] |
| 12 | Editorial staff meeting 11 |  |  |  |  | 113.75d → 113.88d | resources Trần Thanh Điện; Jun Cao; Huỳnh Phương; Phan Minh Thương [50%] → Carole Poland; Jun Cao; Huỳnh Phương Nam; Phan Minh Thuận [50%] |
| 13 | Editorial staff meeting 12 |  |  |  |  | 108.75d → 108.88d | resources Trần Thanh Điện; Jun Cao; Huỳnh Phương; Phan Minh Thương [50%] → Carole Poland; Jun Cao; Huỳnh Phương Nam; Phan Minh Thuận [50%] |
| 14 | Editorial staff meeting 13 |  |  |  |  | 103.75d → 103.88d | resources Trần Thanh Điện; Jun Cao; Huỳnh Phương; Phan Minh Thương [50%] → Carole Poland; Jun Cao; Huỳnh Phương Nam; Phan Minh Thuận [50%] |
| 15 | **Sự tiếp nhận** |  | 2015-05-25 12:00 → 2015-05-26 17:00 A (+1d) | 35.5d → 37d | 58% → 100% | 0d → none |  |
| 17 | Biên tập nội dung |  |  |  |  |  | resources Trần Thanh Điện → Carole Poland |
| 18 | Đánh giá tác phẩm gốc |  | 2015-05-07 12:00 A |  | 66% → 100% | 0d → none | resources Huỳnh Phương; Lê Xuân Thy → Huỳnh Phương Nam; Jane Dow |
| 19 | Đánh giá của tác giả về nội dung biên tập | 2015-05-07 13:00 A | 2015-05-25 12:00 → 2015-05-26 17:00 A (+1d) | 12d → 13.5d | 0% → 100% | 0d → none | resources Tad Orman; Copyeditors → Tad Orman; Biên tập viên |
| 20 | Bàn giao cho bộ phận biên tập | 2015-05-25 12:00 → 2015-05-26 17:00 A (+1d) | 2015-05-25 12:00 → 2015-05-26 17:00 A (+1d) |  | 0% → 100% | 0d → none | resources Trần Thanh Điện → Carole Poland |
| 21 | **Bộ phận biên tập** | 2015-05-25 13:00 → 2015-05-27 08:00 A (+2d) | 2015-07-03 14:00 → 2015-07-03 17:00 | 29.12d → 28d | 0% → 50% | 0d → 3.25d |  |
| 22 | Sắp xếp bản sao cho bản thảo | 2015-05-25 13:00 → 2015-05-27 08:00 A (+2d) | 2015-06-01 14:00 → 2015-06-02 17:00 A (+1d) | 5.12d → 5d | 0% → 100% | 0d → none | resources Huỳnh Phương; Phan Minh Thương [50%] → Huỳnh Phương Nam; Phan Minh Thuận [50%] |
| 23 | Bản sao | 2015-06-01 14:00 → 2015-06-03 08:00 A (+2d) | 2015-06-16 16:00 → 2015-06-17 10:00 A (+1d) | 11.25d → 10.25d | 0% → 100% | 0d → none | was named Hiệu đính bản thảo; resources Copyeditors [200%] → Biên tập viên [200%] |
| 24 | Tác giả duyệt bản sao | 2015-06-16 16:00 → 2015-06-17 10:00 (+1d) | 2015-06-30 16:00 → 2015-07-01 10:00 (+1d) |  |  | 0d → 1.75d | was named Tác giả duyệt bản hiệu đính; resources Tad Orman; Copyeditors [25%] → Tad Orman; Biên tập viên [25%] |
| 25 | Tích hợp chỉnh sửa bản sao | 2015-06-26 11:00 → 2015-06-26 15:00 | 2015-07-03 14:00 → 2015-07-03 17:00 |  |  | 0d → 1.75d | was named Tích hợp chỉnh sửa hiệu đính; resources Trần Thanh Điện; Phan Minh Thương [50%] → Carole Poland; Phan Minh Thuận [50%] |
| 26 | Bàn giao cho sản xuất | 2015-07-03 14:00 → 2015-07-03 17:00 | 2015-07-03 14:00 → 2015-07-03 17:00 |  |  | 0d → 1.75d | resources Huỳnh Phương → Huỳnh Phương Nam |
| 27 | **Thiết kế và sản xuất** | 2015-07-03 14:00 → 2015-07-06 08:00 (+3d) | 2015-09-23 16:00 → 2015-09-23 17:00 | 58.25d → 58d |  | 0d → 2d |  |
| 28 | Dàn trang | 2015-07-03 14:00 → 2015-07-06 08:00 (+3d) | 2015-07-24 14:00 → 2015-07-24 17:00 |  |  | 0d → 1.75d | resources Lê Xuân Thy → Jane Dow |
| 29 | Thiết kế minh họa nội dung | 2015-07-03 14:00 → 2015-07-06 08:00 (+3d) | 2015-07-24 16:00 → 2015-07-27 10:00 (+3d) |  |  | 0d → 1.75d | resources Luis Sousa; Huỳnh Phương → Luis Sousa; Huỳnh Phương Nam |
| 30 | **Duyệt trang lần 1** | 2015-07-24 16:00 → 2015-07-27 10:00 (+3d) | 2015-09-04 16:00 → 2015-09-07 10:00 (+3d) |  |  | 0d → 3.25d |  |
| 31 | Soát lỗi và lập chỉ mục | 2015-07-24 16:00 → 2015-07-27 10:00 (+3d) | 2015-08-07 16:00 → 2015-08-10 10:00 (+3d) |  |  | 0d → 1.75d | resources Tad Orman; Copyeditors → Tad Orman; Biên tập viên |
| 32 | Tích hợp phản hồi duyệt lần 1 | 2015-08-07 16:00 → 2015-08-10 10:00 (+3d) | 2015-08-21 16:00 → 2015-08-24 10:00 (+3d) |  |  | 0d → 1.75d | resources Huỳnh Phương; Phan Minh Thương [50%] → Huỳnh Phương Nam; Phan Minh Thuận [50%] |
| 33 | Gửi trang đã soát lỗi cho sản xuất | 2015-08-21 16:00 → 2015-08-24 10:00 (+3d) | 2015-08-21 16:00 → 2015-08-24 10:00 (+3d) |  |  | 0d → 1.75d | resources Huỳnh Phương → Huỳnh Phương Nam |
| 34 | Nhập chỉnh sửa trang và chỉ mục | 2015-08-21 16:00 → 2015-08-24 10:00 (+3d) | 2015-08-28 16:00 → 2015-08-31 10:00 (+3d) |  |  | 0d → 1.75d | resources Lê Xuân Thy; Phan Minh Thương [50%] → Jane Dow; Phan Minh Thuận [50%] |
| 35 | Thiết kế bìa | 2015-08-28 16:00 → 2015-08-31 10:00 (+3d) | 2015-09-04 16:00 → 2015-09-07 10:00 (+3d) |  |  | 0d → 1.75d |  |
| 36 | **Duyệt trang lần 2** | 2015-09-04 16:00 → 2015-09-07 10:00 (+3d) | 2015-09-23 16:00 → 2015-09-23 17:00 | 13d → 12.75d |  | 0d → 2d |  |
| 37 | Soát thử và duyệt | 2015-09-04 16:00 → 2015-09-07 10:00 (+3d) | 2015-09-15 11:00 → 2015-09-15 15:00 |  |  | 0d → 1.75d | resources Huỳnh Phương → Huỳnh Phương Nam |
| 38 | Gửi trang đã soát lỗi cho sản xuất | 2015-09-15 11:00 → 2015-09-15 15:00 | 2015-09-15 11:00 → 2015-09-15 15:00 |  |  | 0d → 1.75d | resources Huỳnh Phương → Huỳnh Phương Nam |
| 39 | Duyệt cuối | 2015-09-16 16:00 → 2015-09-17 08:00 (+1d) | 2015-09-23 16:00 → 2015-09-23 17:00 |  |  | 0d → 2d | resources Lê Xuân Thy; Huỳnh Phương [50%]; Trần Thanh Điện [50%]; Bound galley proofs [20 copies] → Jane Dow; Huỳnh Phương Nam [50%]; Carole Poland [50%]; Bound galley proofs [20 copies] |
| 40 | **Thiết kế website đi kèm cho sách** | 2015-09-04 16:00 → 2015-09-07 10:00 (+3d) | 2015-09-18 16:00 → 2015-09-21 10:00 (+3d) |  |  | 3d → 4.75d |  |
| 41 | Tạo bản mẫu | 2015-09-04 16:00 → 2015-09-07 10:00 (+3d) | 2015-09-16 16:00 → 2015-09-17 10:00 (+1d) |  |  | 3d → 4.75d | resources Luis Sousa; Huỳnh Phương → Luis Sousa; Huỳnh Phương Nam |
| 42 | Duyệt cùng tác giả | 2015-09-16 16:00 → 2015-09-17 10:00 (+1d) | 2015-09-18 16:00 → 2015-09-21 10:00 (+3d) |  |  | 3d → 4.75d | resources Luis Sousa; Tad Orman; Travel [0.1%]; Phan Minh Thương [50%] → Luis Sousa; Tad Orman; Travel [0.1%]; Phan Minh Thuận [50%] |
| 43 | **Chuẩn bị màu và in ấn** | 2015-09-23 16:00 → 2015-09-28 08:00 (+5d) | 2015-11-26 16:00 → 2015-11-26 17:00 | 46d → 44d |  |  |  |
| 44 | Gửi đến nhà tách màu | 2015-09-23 16:00 → 2015-09-28 08:00 (+5d) | 2015-09-28 16:00 → 2015-09-28 17:00 |  |  |  | resources Huỳnh Phương → Huỳnh Phương Nam |
| 45 | Tạo bản in thử | 2015-09-28 16:00 → 2015-09-29 08:00 (+1d) | 2015-10-12 16:00 → 2015-10-12 17:00 |  |  |  |  |
| 46 | In và giao hàng | 2015-10-15 16:00 → 2015-10-16 08:00 (+1d) | 2015-11-26 16:00 → 2015-11-26 17:00 |  |  |  |  |
| 47 | **Chuẩn bị ra mắt sách** | 2015-09-28 16:00 → 2015-09-29 08:00 (+1d) | 2015-10-28 16:00 → 2015-10-28 17:00 |  |  |  |  |
| 48 | Lập kế hoạch ra mắt | 2015-09-28 16:00 → 2015-09-29 08:00 (+1d) | 2015-10-05 16:00 → 2015-10-05 17:00 |  |  |  | resources Trần Thanh Điện [50%]; Lê Xuân Thy → Carole Poland [50%]; Jane Dow |
| 49 | Phân công thành viên đội ra mắt | 2015-10-05 16:00 → 2015-10-06 08:00 (+1d) | 2015-10-06 16:00 → 2015-10-06 17:00 |  |  |  | resources Trần Thanh Điện → Carole Poland |
| 50 | Hoàn thành bảng câu hỏi của tác giả | 2015-10-06 16:00 → 2015-10-07 08:00 (+1d) | 2015-10-13 16:00 → 2015-10-13 17:00 |  |  |  | resources Huỳnh Phương; Tad Orman; Travel [0.1%] → Huỳnh Phương Nam; Tad Orman; Travel [0.1%] |
| 51 | Lên lịch phỏng vấn tác giả | 2015-10-13 16:00 → 2015-10-14 08:00 (+1d) | 2015-10-14 16:00 → 2015-10-14 17:00 |  |  |  | resources Huỳnh Phương → Huỳnh Phương Nam |
| 52 | Thiết kế và đặt ấn phẩm marketing | 2015-10-14 16:00 → 2015-10-15 08:00 (+1d) | 2015-10-28 16:00 → 2015-10-28 17:00 |  |  |  | resources Huỳnh Phương → Huỳnh Phương Nam |

## Version 3 (saved 2025-09-25, file Advanced Tracking D_Start.mpp)

Note of the change: QLDA Buổi 4

Last finish 2015-11-26 → 2016-01-07 (+42d). Complete tasks 14 → 19.

Changed:

| ID | Task | Start | Finish | Duration | Complete | Total float | Other |
| --- | --- | --- | --- | --- | --- | --- | --- |
| 1 | **Họp nhân viên biên tập** | 2015-04-13 08:00 A → 2015-04-13 A | 2015-07-06 09:00 → 2015-08-05 (+30d) | 60.12d → 82.12d | 54% → 37% | 103.88d → 111.88d | was named Editorial Staff Meeting; baseline start 2015-04-13 08:00 → 2015-04-13; baseline finish 2015-07-06 09:00 → 2015-07-06 |
| 2 | Editorial staff meeting 1 | 2015-04-13 08:00 A → 2015-04-13 A | 2015-04-13 09:00 A → 2015-04-13 A |  |  |  | constraint start no earlier than 2015-04-13 08:00 → start no earlier than 2015-04-13; resources Carole Poland; Jun Cao; Huỳnh Phương Nam; Phan Minh Thuận [50%] → Carole Poland; Jun Cao; Huỳnh Phương Nam; Phan Thanh Khải [50%]; baseline start 2015-04-13 08:00 → 2015-04-13; baseline finish 2015-04-13 09:00 → 2015-04-13 |
| 3 | Editorial staff meeting 2 | 2015-04-20 08:00 A → 2015-04-20 A | 2015-04-20 09:00 A → 2015-04-20 A |  |  |  | constraint start no earlier than 2015-04-20 08:00 → start no earlier than 2015-04-20; resources Carole Poland; Jun Cao; Huỳnh Phương Nam; Phan Minh Thuận [50%] → Carole Poland; Jun Cao; Huỳnh Phương Nam; Phan Thanh Khải [50%]; baseline start 2015-04-20 08:00 → 2015-04-20; baseline finish 2015-04-20 09:00 → 2015-04-20 |
| 4 | Editorial staff meeting 3 | 2015-04-27 08:00 A → 2015-04-27 A | 2015-04-27 09:00 A → 2015-04-27 A |  |  |  | constraint start no earlier than 2015-04-27 08:00 → start no earlier than 2015-04-27; resources Carole Poland; Jun Cao; Huỳnh Phương Nam; Phan Minh Thuận [50%] → Carole Poland; Jun Cao; Huỳnh Phương Nam; Phan Thanh Khải [50%]; baseline start 2015-04-27 08:00 → 2015-04-27; baseline finish 2015-04-27 09:00 → 2015-04-27 |
| 5 | Editorial staff meeting 4 | 2015-05-04 08:00 A → 2015-05-04 A | 2015-05-04 09:00 A → 2015-05-04 A |  |  |  | constraint start no earlier than 2015-05-04 08:00 → start no earlier than 2015-05-04; resources Carole Poland; Jun Cao; Huỳnh Phương Nam; Phan Minh Thuận [50%] → Carole Poland; Jun Cao; Huỳnh Phương Nam; Phan Thanh Khải [50%]; baseline start 2015-05-04 08:00 → 2015-05-04; baseline finish 2015-05-04 09:00 → 2015-05-04 |
| 6 | Editorial staff meeting 5 | 2015-05-11 08:00 A → 2015-05-11 A | 2015-05-11 09:00 A → 2015-05-11 A |  |  |  | constraint start no earlier than 2015-05-11 08:00 → start no earlier than 2015-05-11; resources Carole Poland; Jun Cao; Huỳnh Phương Nam; Phan Minh Thuận [50%] → Carole Poland; Jun Cao; Huỳnh Phương Nam; Phan Thanh Khải [50%]; baseline start 2015-05-11 08:00 → 2015-05-11; baseline finish 2015-05-11 09:00 → 2015-05-11 |
| 7 | Editorial staff meeting 6 | 2015-05-18 08:00 A → 2015-05-18 A | 2015-05-18 09:00 A → 2015-05-18 A |  |  |  | constraint start no earlier than 2015-05-18 08:00 → start no earlier than 2015-05-18; resources Carole Poland; Jun Cao; Huỳnh Phương Nam; Phan Minh Thuận [50%] → Carole Poland; Jun Cao; Huỳnh Phương Nam; Phan Thanh Khải [50%]; baseline start 2015-05-18 08:00 → 2015-05-18; baseline finish 2015-05-18 09:00 → 2015-05-18 |
| 8 | Editorial staff meeting 7 | 2015-05-25 08:00 A → 2015-05-25 A | 2015-05-25 09:00 A → 2015-05-25 A |  |  |  | constraint start no earlier than 2015-05-25 08:00 → start no earlier than 2015-05-25; resources Carole Poland; Jun Cao; Huỳnh Phương Nam; Phan Minh Thuận [50%] → Carole Poland; Jun Cao; Huỳnh Phương Nam; Phan Thanh Khải [50%]; baseline start 2015-05-25 08:00 → 2015-05-25; baseline finish 2015-05-25 09:00 → 2015-05-25 |
| 9 | Editorial staff meeting 8 | 2015-06-01 08:00 → 2015-08-04 (+64d) | 2015-06-01 09:00 → 2015-08-05 (+65d) | 1h → 2h |  | 128.88d → 81.88d | constraint start no earlier than 2015-06-01 08:00 → start no earlier than 2015-08-04; resources Carole Poland; Jun Cao; Huỳnh Phương Nam; Phan Minh Thuận [50%] → Carole Poland; Jun Cao; Huỳnh Phương Nam; Phan Thanh Khải [50%]; baseline start 2015-06-01 08:00 → 2015-06-01; baseline finish 2015-06-01 09:00 → 2015-06-01 |
| 10 | Editorial staff meeting 9 | 2015-06-08 08:00 → 2015-08-04 (+57d) | 2015-06-08 09:00 → 2015-08-05 (+58d) | 1h → 2h |  | 123.88d → 81.88d | constraint start no earlier than 2015-06-08 08:00 → start no earlier than 2015-08-04; resources Carole Poland; Jun Cao; Huỳnh Phương Nam; Phan Minh Thuận [50%] → Carole Poland; Jun Cao; Huỳnh Phương Nam; Phan Thanh Khải [50%]; baseline start 2015-06-08 08:00 → 2015-06-08; baseline finish 2015-06-08 09:00 → 2015-06-08 |
| 11 | Editorial staff meeting 10 | 2015-06-15 08:00 → 2015-08-04 (+50d) | 2015-06-15 09:00 → 2015-08-05 (+51d) | 1h → 2h |  | 118.88d → 81.88d | constraint start no earlier than 2015-06-15 08:00 → start no earlier than 2015-08-04; resources Carole Poland; Jun Cao; Huỳnh Phương Nam; Phan Minh Thuận [50%] → Carole Poland; Jun Cao; Huỳnh Phương Nam; Phan Thanh Khải [50%]; baseline start 2015-06-15 08:00 → 2015-06-15; baseline finish 2015-06-15 09:00 → 2015-06-15 |
| 12 | Editorial staff meeting 11 | 2015-06-22 08:00 → 2015-08-04 (+43d) | 2015-06-22 09:00 → 2015-08-05 (+44d) | 1h → 2h |  | 113.88d → 81.88d | constraint start no earlier than 2015-06-22 08:00 → start no earlier than 2015-08-04; resources Carole Poland; Jun Cao; Huỳnh Phương Nam; Phan Minh Thuận [50%] → Carole Poland; Jun Cao; Huỳnh Phương Nam; Phan Thanh Khải [50%]; baseline start 2015-06-22 08:00 → 2015-06-22; baseline finish 2015-06-22 09:00 → 2015-06-22 |
| 13 | Editorial staff meeting 12 | 2015-06-29 08:00 → 2015-08-04 (+36d) | 2015-06-29 09:00 → 2015-08-05 (+37d) | 1h → 2h |  | 108.88d → 81.88d | constraint start no earlier than 2015-06-29 08:00 → start no earlier than 2015-08-04; resources Carole Poland; Jun Cao; Huỳnh Phương Nam; Phan Minh Thuận [50%] → Carole Poland; Jun Cao; Huỳnh Phương Nam; Phan Thanh Khải [50%]; baseline start 2015-06-29 08:00 → 2015-06-29; baseline finish 2015-06-29 09:00 → 2015-06-29 |
| 14 | Editorial staff meeting 13 | 2015-07-06 08:00 → 2015-08-04 (+29d) | 2015-07-06 09:00 → 2015-08-05 (+30d) | 1h → 2h |  | 103.88d → 81.88d | constraint start no earlier than 2015-07-06 08:00 → start no earlier than 2015-08-04; resources Carole Poland; Jun Cao; Huỳnh Phương Nam; Phan Minh Thuận [50%] → Carole Poland; Jun Cao; Huỳnh Phương Nam; Phan Thanh Khải [50%]; baseline start 2015-07-06 08:00 → 2015-07-06; baseline finish 2015-07-06 09:00 → 2015-07-06 |
| 15 | **Sự tiếp nhận** | 2015-04-06 08:00 A → 2015-04-06 A | 2015-05-26 17:00 A → 2015-05-26 A |  |  |  | baseline start 2015-04-06 08:00 → 2015-04-06; baseline finish 2015-05-25 12:00 → 2015-05-25 |
| 16 | Nhận bản thảo | 2015-04-06 08:00 A → 2015-04-06 A | 2015-04-06 08:00 A → 2015-04-06 A |  |  |  | baseline start 2015-04-06 08:00 → 2015-04-06; baseline finish 2015-04-06 08:00 → 2015-04-06 |
| 17 | Biên tập nội dung | 2015-04-06 08:00 A → 2015-04-06 A | 2015-04-30 10:00 A → 2015-04-30 A |  |  |  | baseline start 2015-04-06 08:00 → 2015-04-06; baseline finish 2015-04-30 10:00 → 2015-04-30 |
| 18 | Đánh giá tác phẩm gốc | 2015-04-23 10:00 A → 2015-04-23 A | 2015-05-07 12:00 A → 2015-05-07 A |  |  |  | resources Huỳnh Phương Nam; Jane Dow → Huỳnh Phương Nam; Lê Thành Công; baseline start 2015-04-23 10:00 → 2015-04-23; baseline finish 2015-05-07 12:00 → 2015-05-07 |
| 19 | Đánh giá của tác giả về nội dung biên tập | 2015-05-07 13:00 A → 2015-05-07 A | 2015-05-26 17:00 A → 2015-05-26 A |  |  |  | resources Tad Orman; Biên tập viên → Tạ Thanh Hải; Biên tập viên; baseline start 2015-05-07 13:00 → 2015-05-07; baseline finish 2015-05-25 12:00 → 2015-05-25 |
| 20 | Bàn giao cho bộ phận biên tập | 2015-05-26 17:00 A → 2015-05-26 A | 2015-05-26 17:00 A → 2015-05-26 A |  |  |  | baseline start 2015-05-25 12:00 → 2015-05-25; baseline finish 2015-05-25 12:00 → 2015-05-25 |
| 21 | **Bộ phận biên tập** | 2015-05-27 08:00 A → 2015-05-27 A | 2015-07-03 17:00 → 2015-07-06 A (+3d) | 28d → 28.4d | 50% → 100% | 3.25d → none | baseline start 2015-05-25 13:00 → 2015-05-25; baseline finish 2015-07-03 14:00 → 2015-07-03 |
| 22 | Sắp xếp bản sao cho bản thảo | 2015-05-27 08:00 A → 2015-05-27 A | 2015-06-02 17:00 A → 2015-06-02 A |  |  |  | resources Huỳnh Phương Nam; Phan Minh Thuận [50%] → Huỳnh Phương Nam; Phan Thanh Khải [50%]; baseline start 2015-05-25 13:00 → 2015-05-25; baseline finish 2015-06-01 14:00 → 2015-06-01 |
| 23 | Hiệu đính bản thảo | 2015-06-03 08:00 A → 2015-06-03 A | 2015-06-17 10:00 A → 2015-06-17 A | 10.25d → 10.5d |  |  | was named Bản sao; baseline start 2015-06-01 14:00 → 2015-06-01; baseline finish 2015-06-16 16:00 → 2015-06-16 |
| 24 | Tác giả duyệt bản hiệu đính | 2015-06-17 10:00 → 2015-06-17 A | 2015-07-01 10:00 → 2015-07-01 A | 10d → 10.2d | 0% → 100% | 1.75d → none | was named Tác giả duyệt bản sao; resources Tad Orman; Biên tập viên [25%] → Tạ Thanh Hải; Biên tập viên [25%]; baseline start 2015-06-16 16:00 → 2015-06-16; baseline finish 2015-06-30 16:00 → 2015-06-30 |
| 25 | Tích hợp chỉnh sửa hiệu đính | 2015-06-26 15:00 → 2015-06-29 A (+3d) | 2015-07-03 17:00 → 2015-07-06 A (+3d) |  | 0% → 100% | 1.75d → none | was named Tích hợp chỉnh sửa bản sao; resources Carole Poland; Phan Minh Thuận [50%] → Carole Poland; Phan Thanh Khải [50%]; baseline start 2015-06-26 11:00 → 2015-06-26; baseline finish 2015-07-03 14:00 → 2015-07-03 |
| 26 | Bàn giao cho sản xuất | 2015-07-03 17:00 → 2015-07-06 A (+3d) | 2015-07-03 17:00 → 2015-07-06 A (+3d) |  | 0% → 100% | 1.75d → none | baseline start 2015-07-03 14:00 → 2015-07-03; baseline finish 2015-07-03 14:00 → 2015-07-03 |
| 27 | **Thiết kế và sản xuất** | 2015-07-06 08:00 → 2015-07-06 A | 2015-09-23 17:00 → 2015-11-05 (+43d) | 58d → 88.6d | 0% → 42% | 2d → 1d | baseline start 2015-07-03 14:00 → 2015-07-03; baseline finish 2015-09-23 16:00 → 2015-09-23 |
| 28 | Dàn trang | 2015-07-06 08:00 → 2015-07-06 A | 2015-07-24 17:00 → 2015-07-27 A (+3d) |  | 0% → 100% | 1.75d → none | resources Jane Dow → Lê Thành Công; baseline start 2015-07-03 14:00 → 2015-07-03; baseline finish 2015-07-24 14:00 → 2015-07-24 |
| 29 | Thiết kế minh họa nội dung | 2015-07-06 08:00 → 2015-07-06 A | 2015-07-27 10:00 → 2015-07-29 A (+2d) | 15.25d → 17.6d | 0% → 100% | 1.75d → none | baseline start 2015-07-03 14:00 → 2015-07-03; baseline finish 2015-07-24 16:00 → 2015-07-24 |
| 30 | **Đánh giá các trang lần thứ 1** | 2015-07-27 10:00 → 2015-07-30 A (+3d) | 2015-09-07 10:00 → 2015-09-11 (+4d) | 30d → 32d | 0% → 7% | 3.25d → 1d | was named Duyệt trang lần 1; baseline start 2015-07-24 16:00 → 2015-07-24; baseline finish 2015-09-04 16:00 → 2015-09-04 |
| 31 | Hiệu đính và lập chỉ mục | 2015-07-27 10:00 → 2015-07-30 A (+3d) | 2015-08-10 10:00 → 2015-08-14 (+4d) |  | 0% → 20% | 1.75d → 1d | was named Soát lỗi và lập chỉ mục; constraint start no earlier than 2015-07-17 08:00 → start no earlier than 2015-07-17; resources Tad Orman; Biên tập viên → Tạ Thanh Hải; Biên tập viên; baseline start 2015-07-24 16:00 → 2015-07-24; baseline finish 2015-08-07 16:00 → 2015-08-07 |
| 32 | Kết hợp các đánh giá trang lần thứ 1 | 2015-08-10 10:00 → 2015-08-17 (+7d) | 2015-08-24 10:00 → 2015-08-28 (+4d) |  |  | 1.75d → 1d | was named Tích hợp phản hồi duyệt lần 1; resources Huỳnh Phương Nam; Phan Minh Thuận [50%] → Huỳnh Phương Nam; Phan Thanh Khải [50%]; baseline start 2015-08-07 16:00 → 2015-08-07; baseline finish 2015-08-21 16:00 → 2015-08-21 |
| 33 | Gửi các trang đã được hiệu đính đến bộ phận sản xuất | 2015-08-24 10:00 → 2015-08-28 (+4d) | 2015-08-24 10:00 → 2015-08-28 (+4d) |  |  | 1.75d → 1d | was named Gửi trang đã soát lỗi cho sản xuất; baseline start 2015-08-21 16:00 → 2015-08-21; baseline finish 2015-08-21 16:00 → 2015-08-21 |
| 34 | Nhập các chỉnh sửa trang và lập chỉ mục | 2015-08-24 10:00 → 2015-08-31 (+7d) | 2015-08-31 10:00 → 2015-09-04 (+4d) |  |  | 1.75d → 1d | was named Nhập chỉnh sửa trang và chỉ mục; resources Jane Dow; Phan Minh Thuận [50%] → Lê Thành Công; Phan Thanh Khải [50%]; baseline start 2015-08-21 16:00 → 2015-08-21; baseline finish 2015-08-28 16:00 → 2015-08-28 |
| 35 | Thiết kế trang bìa | 2015-08-31 10:00 → 2015-09-07 (+7d) | 2015-09-07 10:00 → 2015-09-11 (+4d) |  |  | 1.75d → 1d | was named Thiết kế bìa; baseline start 2015-08-28 16:00 → 2015-08-28; baseline finish 2015-09-04 16:00 → 2015-09-04 |
| 36 | **Đánh giá các trang lần thứ 2** | 2015-09-07 10:00 → 2015-09-14 (+7d) | 2015-09-23 17:00 → 2015-09-30 (+7d) | 12.75d → 13d |  | 2d → 27d | was named Duyệt trang lần 2; baseline start 2015-09-04 16:00 → 2015-09-04; baseline finish 2015-09-23 16:00 → 2015-09-23 |
| 37 | Soát thử và duyệt | 2015-09-07 10:00 → 2015-09-14 (+7d) | 2015-09-15 15:00 → 2015-09-22 (+7d) |  |  | 1.75d → 28.5d | baseline start 2015-09-04 16:00 → 2015-09-04; baseline finish 2015-09-15 11:00 → 2015-09-15 |
| 38 | Gửi trang đã soát lỗi cho sản xuất | 2015-09-15 15:00 → 2015-09-22 (+7d) | 2015-09-15 15:00 → 2015-09-22 (+7d) |  |  | 1.75d → 28.5d | baseline start 2015-09-15 11:00 → 2015-09-15; baseline finish 2015-09-15 11:00 → 2015-09-15 |
| 39 | Duyệt cuối | 2015-09-17 08:00 → 2015-09-24 (+7d) | 2015-09-23 17:00 → 2015-09-30 (+7d) |  |  | 2d → 27d | resources Jane Dow; Huỳnh Phương Nam [50%]; Carole Poland [50%]; Bound galley proofs [20 copies] → Lê Thành Công; Huỳnh Phương Nam [50%]; Carole Poland [50%]; Bound galley proofs [20 copies]; baseline start 2015-09-16 16:00 → 2015-09-16; baseline finish 2015-09-23 16:00 → 2015-09-23 |
| 40 | **Thiết kế website đi kèm cho sách** | 2015-09-07 10:00 → 2015-09-14 (+7d) | 2015-09-21 10:00 → 2015-11-05 (+45d) | 10d → 39d |  | 4.75d → 1d | baseline start 2015-09-04 16:00 → 2015-09-04; baseline finish 2015-09-18 16:00 → 2015-09-18 |
| 41 | Tạo bản mẫu | 2015-09-07 10:00 → 2015-09-14 (+7d) | 2015-09-17 10:00 → 2015-09-23 (+6d) |  |  | 4.75d → 1d | baseline start 2015-09-04 16:00 → 2015-09-04; baseline finish 2015-09-16 16:00 → 2015-09-16 |
| 42 | Duyệt cùng tác giả | 2015-09-17 10:00 → 2015-09-24 (+7d) | 2015-09-21 10:00 → 2015-11-05 (+45d) | 2d → 4d |  | 4.75d → 1d | constraint none → start no earlier than 2015-08-12; resources Luis Sousa; Tad Orman; Travel [0.1%]; Phan Minh Thuận [50%] → Luis Sousa; Tạ Thanh Hải; Travel [0.1%]; Phan Thanh Khải [50%]; baseline start 2015-09-16 16:00 → 2015-09-16; baseline finish 2015-09-18 16:00 → 2015-09-18 |
| 43 | **Chuẩn bị màu và in ấn** | 2015-09-28 08:00 → 2015-11-09 (+42d) | 2015-11-26 17:00 → 2016-01-07 (+42d) |  |  |  | baseline start 2015-09-23 16:00 → 2015-09-23; baseline finish 2015-11-26 16:00 → 2015-11-26 |
| 44 | Gửi đến nhà tách màu | 2015-09-28 08:00 → 2015-11-09 (+42d) | 2015-09-28 17:00 → 2015-11-09 (+42d) |  |  |  | baseline start 2015-09-23 16:00 → 2015-09-23; baseline finish 2015-09-28 16:00 → 2015-09-28 |
| 45 | Tạo bản in thử | 2015-09-29 08:00 → 2015-11-10 (+42d) | 2015-10-12 17:00 → 2015-11-23 (+42d) |  |  |  | baseline start 2015-09-28 16:00 → 2015-09-28; baseline finish 2015-10-12 16:00 → 2015-10-12 |
| 46 | In và giao hàng | 2015-10-16 08:00 → 2015-11-27 (+42d) | 2015-11-26 17:00 → 2016-01-07 (+42d) |  |  |  | baseline start 2015-10-15 16:00 → 2015-10-15; baseline finish 2015-11-26 16:00 → 2015-11-26 |
| 47 | **Chuẩn bị ra mắt sách** | 2015-09-29 08:00 → 2015-11-10 (+42d) | 2015-10-28 17:00 → 2015-12-09 (+42d) |  |  |  | baseline start 2015-09-28 16:00 → 2015-09-28; baseline finish 2015-10-28 16:00 → 2015-10-28 |
| 48 | Lập kế hoạch ra mắt | 2015-09-29 08:00 → 2015-11-10 (+42d) | 2015-10-05 17:00 → 2015-11-16 (+42d) |  |  |  | resources Carole Poland [50%]; Jane Dow → Carole Poland [50%]; Lê Thành Công; baseline start 2015-09-28 16:00 → 2015-09-28; baseline finish 2015-10-05 16:00 → 2015-10-05 |
| 49 | Phân công thành viên đội ra mắt | 2015-10-06 08:00 → 2015-11-17 (+42d) | 2015-10-06 17:00 → 2015-11-17 (+42d) |  |  |  | baseline start 2015-10-05 16:00 → 2015-10-05; baseline finish 2015-10-06 16:00 → 2015-10-06 |
| 50 | Hoàn thành bảng câu hỏi của tác giả | 2015-10-07 08:00 → 2015-11-18 (+42d) | 2015-10-13 17:00 → 2015-11-24 (+42d) |  |  |  | resources Huỳnh Phương Nam; Tad Orman; Travel [0.1%] → Huỳnh Phương Nam; Tạ Thanh Hải; Travel [0.1%]; baseline start 2015-10-06 16:00 → 2015-10-06; baseline finish 2015-10-13 16:00 → 2015-10-13 |
| 51 | Lên lịch phỏng vấn tác giả | 2015-10-14 08:00 → 2015-11-25 (+42d) | 2015-10-14 17:00 → 2015-11-25 (+42d) |  |  |  | baseline start 2015-10-13 16:00 → 2015-10-13; baseline finish 2015-10-14 16:00 → 2015-10-14 |
| 52 | Thiết kế và đặt ấn phẩm marketing | 2015-10-15 08:00 → 2015-11-26 (+42d) | 2015-10-28 17:00 → 2015-12-09 (+42d) |  |  |  | baseline start 2015-10-14 16:00 → 2015-10-14; baseline finish 2015-10-28 16:00 → 2015-10-28 |
